# NEW FINAL_updated_v1

Schedule from MS Project, 2021-09-02 to 2021-12-29, status date 2021-11-09, costs in $, A marks actual dates.

## Calendars

- Standard: Mon-Fri 08:00-12:00, 13:00-17:00; Sat-Sun off. Exceptions (off unless hours are given): 2021-11-25 to 2021-11-26 (Thanksgiving).

## Resources

| Resource | Rate |
| --- | --- |
| PROJECT SPONSOR |  |
| PROJECT MANAGER | 48 |
| TECH 1 | 32 |
| TECH 2 | 32 |
| TECH 3 | 32 |
| IT TECHNICAL CO-OD | 30 |
| PUBLIC SAFETY IT SPECIALIST | 23 |
| IT SECURITY CONSULTANT | 41 |

## Schedule

| ID | WBS | Task | Type | Duration | Start | Finish | Predecessors | Complete | Remaining | Baseline start | Baseline finish | Baseline duration | Constraint | Resources | Work | Actual work | Cost | Baseline cost | Actual cost |
| --- | --- | --- | --- | --- | --- | --- | --- | --- | --- | --- | --- | --- | --- | --- | --- | --- | --- | --- | --- |
| 1 | 1 | **PROJECT INITIALIZATION** |  | 13d | 2021-09-02 A | 2021-09-20 A |  | 100% |  | 2021-09-02 | 2021-09-20 | 13d |  |  | 176h | 176h | 6,784 | 6,784 | 6,784 |
| 2 | 1.1 | Identify MOV |  | 3d | 2021-09-02 A | 2021-09-06 A |  | 100% |  | 2021-09-02 | 2021-09-06 | 3d |  | PROJECT MANAGER | 24h | 24h | 1,152 | 1,152 | 1,152 |
| 3 | 1.2 | DEFINING ALTERNATIVES |  | 4d | 2021-09-07 A | 2021-09-10 A | 2 | 100% |  | 2021-09-07 | 2021-09-10 | 4d |  | TECH 2; TECH 3 | 64h | 64h | 2,048 | 2,048 | 2,048 |
| 4 | 1.3 | TOTAL COST OF OWNERSHIP |  | 3d | 2021-09-13 A | 2021-09-15 A | 3 | 100% |  | 2021-09-13 | 2021-09-15 | 3d |  | PROJECT MANAGER; TECH 2 | 48h | 48h | 1,920 | 1,920 | 1,920 |
| 5 | 1.4 | TOTAL BENEFIT OF OWNERSHIP |  | 2d | 2021-09-16 A | 2021-09-17 A | 4 | 100% |  | 2021-09-16 | 2021-09-17 | 2d |  | PROJECT MANAGER; TECH 2 | 32h | 32h | 1,280 | 1,280 | 1,280 |
| 6 | 1.5 | BUSINESS CASE DELIVERABLE | manual | 1d | 2021-09-20 A | 2021-09-20 A | 5 | 100% |  | 2021-09-20 | 2021-09-20 | 1d |  | PROJECT MANAGER | 8h | 8h | 384 | 384 | 384 |
| 7 | 2 | MILESTONE : CLIENT APPROVAL OF BUSINESS CASE | manual | 1d | 2021-09-21 A | 2021-09-21 A | 1 | 100% |  | 2021-09-21 | 2021-09-21 | 1d |  | PROJECT SPONSOR | 8h | 8h |  |  |  |
| 8 | 3 | **PROJECT CHARTER** |  | 2d | 2021-09-22 A | 2021-09-23 A | 7, 1 | 100% |  | 2021-09-22 | 2021-09-23 | 2d |  |  | 16h | 16h | 768 | 768 | 768 |
| 9 | 3.1 | CREATING PROJECT CHARTER | manual | 2d | 2021-09-22 A | 2021-09-23 A | 7 | 100% |  | 2021-09-22 | 2021-09-23 | 2d |  | PROJECT MANAGER | 16h | 16h | 768 | 768 | 768 |
| 10 | 4 | MILESTONE:PROJECT CHARTER APPROVAL | manual | 1d | 2021-09-24 A | 2021-09-24 A | 8 | 100% |  | 2021-09-24 | 2021-09-24 | 1d |  | PROJECT SPONSOR | 8h | 8h |  |  |  |
| 11 | 5 | **PROJECT PLANNING** |  | 10d | 2021-09-27 A | 2021-10-08 A | 10 | 100% |  | 2021-09-27 | 2021-10-07 | 9d |  |  | 160h | 160h | 5,776 | 5,120 | 5,776 |
| 12 | 5.1 | IDENTIFY SCOPE OF PROJECT | manual | 2d | 2021-09-27 A | 2021-09-28 A | 10 | 100% |  | 2021-09-27 | 2021-09-28 | 2d |  | PROJECT MANAGER; TECH 2; PROJECT SPONSOR | 48h | 48h | 1,280 | 1,280 | 1,280 |
| 13 | 5.2 | DESIGNING THE STRUCTURE CHART | manual | 1d | 2021-09-29 A | 2021-09-29 A | 12 | 100% |  | 2021-09-29 | 2021-09-29 | 1d |  | TECH 2 | 8h | 8h | 256 | 256 | 256 |
| 14 | 5.3 | CREATING THE WORK BREAKDOWN STRUCTURE | manual | 2d | 2021-09-30 A | 2021-10-01 A | 13 | 100% |  | 2021-09-30 | 2021-10-01 | 2d |  | PROJECT MANAGER; TECH 3 | 32h | 32h | 1,280 | 1,280 | 1,280 |
| 15 | 5.4 | IDENTIFY AND ALLOCATE RESOURCES | manual | 1d | 2021-10-04 A | 2021-10-04 A | 14 | 100% |  | 2021-10-04 | 2021-10-04 | 1d |  | PROJECT MANAGER | 8h | 8h | 384 | 384 | 384 |
| 16 | 5.5 | SECURITY PLANNING | manual | 2d | 2021-10-04 A | 2021-10-05 A | 15SS | 100% |  |  |  |  |  | IT SECURITY CONSULTANT | 16h | 16h | 656 |  | 656 |
| 17 | 5.6 | ESTIMATING THE BUDGET | manual | 2d | 2021-10-06 A | 2021-10-07 A | 15, 16 | 100% |  | 2021-10-05 | 2021-10-06 | 2d |  | PROJECT MANAGER; TECH 3 | 32h | 32h | 1,280 | 1,280 | 1,280 |
| 18 | 5.7 | DELIVARABLE : SCOPE MANGEMENT PLAN | manual | 1d | 2021-10-08 A | 2021-10-08 A | 17 | 100% |  | 2021-10-07 | 2021-10-07 | 1d |  | PROJECT MANAGER; TECH 2 | 16h | 16h | 640 | 640 | 640 |
| 19 | 6 | MILESTONE: SCOPE MANAGEMENT PLAN APPROVAL | manual | 1d | 2021-10-11 A | 2021-10-11 A | 11 | 100% |  | 2021-10-08 | 2021-10-08 | 1d |  | PROJECT SPONSOR | 8h | 8h |  |  |  |
| 20 | 7 | **EXECUTE** |  | 50d | 2021-10-12 A | 2021-12-22 | 19 | 40% | 30d | 2021-10-11 | 2021-12-13 | 44d |  |  | 832h | 296h | 61,895 | 59,271 | 28,807 |
| 21 | 7.1 | **ANALYSIS** |  | 9d | 2021-10-12 A | 2021-10-22 A | 19 | 100% |  | 2021-10-11 | 2021-10-19 | 7d |  |  | 152h | 152h | 5,008 | 4,352 | 5,008 |
| 22 | 7.1.1 | ANALYZING THE CURRENT SYSTEM | manual | 2d | 2021-10-12 A | 2021-10-13 A | 19, 11 | 100% |  | 2021-10-11 | 2021-10-12 | 2d |  | PROJECT MANAGER; TECH 1; TECH 2; TECH 3 | 64h | 64h | 2,304 | 2,304 | 2,304 |
| 23 | 7.1.2 | CURRENT SYSTEM SECURITY ANALYSIS | manual | 1d | 2021-10-12 A | 2021-10-12 A | 19 | 100% |  |  |  |  |  | IT SECURITY CONSULTANT | 8h | 8h | 328 |  | 328 |
| 24 | 7.1.3 | REQUIREMENT GATHERING |  | 2d | 2021-10-15 A | 2021-10-18 A | 22, 23 | 100% |  | 2021-10-13 | 2021-10-14 | 2d | start no earlier than 2021-10-15 | TECH 1; TECH 3 | 32h | 32h | 1,024 | 1,024 | 1,024 |
| 25 | 7.1.4 | ANALYZE THE REQUIREMENTS | manual | 2d | 2021-10-19 A | 2021-10-20 A | 24 | 100% |  | 2021-10-15 | 2021-10-18 | 2d |  | TECH 1; TECH 3 | 32h | 32h | 1,024 | 1,024 | 1,024 |
| 26 | 7.1.5 | SECURITY REQUIREMENTS ANALYSIS | manual | 1d | 2021-10-21 A | 2021-10-21 A | 25 | 100% |  |  |  |  |  | IT SECURITY CONSULTANT | 8h | 8h | 328 |  | 328 |
| 27 | 7.1.6 | CLIENT APPROVAL |  | 1d | 2021-10-22 A | 2021-10-22 A | 25, 26 | 100% |  | 2021-10-19 | 2021-10-19 | 1d | start no earlier than 2021-10-22 | PROJECT SPONSOR | 8h | 8h |  |  |  |

| ID | WBS | Task | Type | Duration | Start | Finish | Predecessors | Complete | Remaining | Baseline start | Baseline finish | Baseline duration | Resources | Work | Actual work | Cost | Baseline cost | Actual cost |
| --- | --- | --- | --- | --- | --- | --- | --- | --- | --- | --- | --- | --- | --- | --- | --- | --- | --- | --- |
| 28 | 7.2 | **DESIGN** |  | 5d | 2021-10-25 A | 2021-10-29 A | 21 | 100% |  | 2021-10-20 | 2021-10-25 | 4d |  | 64h | 64h | 2,248 | 1,920 | 2,248 |
| 29 | 7.2.1 | DEVELOPING ICT DIAGRAM | manual | 2d | 2021-10-25 A | 2021-10-26 A | 27, 21 | 100% |  | 2021-10-20 | 2021-10-21 | 2d | PROJECT MANAGER; TECH 3 | 32h | 32h | 1,280 | 1,280 | 1,280 |
| 30 | 7.2.2 | ARCHITECTURAL DESIGN | manual | 1d | 2021-10-27 A | 2021-10-27 A | 29 | 100% |  | 2021-10-22 | 2021-10-22 | 1d | PROJECT MANAGER; TECH 2 | 16h | 16h | 640 | 640 | 640 |
| 31 | 7.2.3 | IT SECURITY DESIGN | manual | 1d | 2021-10-28 A | 2021-10-28 A | 30 | 100% |  |  |  |  | IT SECURITY CONSULTANT | 8h | 8h | 328 |  | 328 |
| 32 | 7.2.4 | CLIENT APPROVAL | manual | 1d | 2021-10-29 A | 2021-10-29 A | 30, 31 | 100% |  | 2021-10-25 | 2021-10-25 | 1d | PROJECT SPONSOR | 8h | 8h |  |  |  |
| 33 | 7.3 | **CONSTRUCTION** |  | 11d | 2021-11-01 A | 2021-11-15 | 28 | 55% | 5d | 2021-10-26 | 2021-11-08 | 10d |  | 168h | 80h | 24,615 | 24,287 | 21,551 |
| 34 | 7.3.1 | UPGRADING NETWORKS | manual | 2d | 2021-11-01 A | 2021-11-02 A | 32 | 100% |  | 2021-10-26 | 2021-10-27 | 2d | PROJECT MANAGER; TECH 1 | 32h | 32h | 3,284 | 3,284 | 3,284 |
| 35 | 7.3.2 | REPLACING WORKSTATIONS | manual | 2d | 2021-11-03 A | 2021-11-04 A | 34 | 100% |  | 2021-10-28 | 2021-10-29 | 2d | TECH 2 | 16h | 16h | 13,427 | 13,427 | 13,427 |
| 36 | 7.3.3 | REPLACING SERVERS | manual | 2d | 2021-11-05 A | 2021-11-08 A | 35 | 100% |  | 2021-11-01 | 2021-11-02 | 2d | PROJECT MANAGER; TECH 3 | 32h | 32h | 4,840 | 4,840 | 4,840 |
| 37 | 7.3.4 | MIGRATING BACKUP STORAGE FROM ONPREMISE TO CLOUD | manual | 3d | 2021-11-09 | 2021-11-11 | 36 |  |  | 2021-11-03 | 2021-11-05 | 3d | PROJECT MANAGER; TECH 2; TECH 3 | 72h |  | 2,736 | 2,736 |  |
| 38 | 7.3.5 | VERIFYING THE SECURITY REQUIREMENTS OF BACKUP STORAGE | manual | 1d | 2021-11-12 | 2021-11-12 | 37 |  |  |  |  |  | IT SECURITY CONSULTANT | 8h |  | 328 |  |  |
| 39 | 7.3.6 | CLIENT APPROVAL | manual | 1d | 2021-11-15 | 2021-11-15 | 37, 38 |  |  | 2021-11-08 | 2021-11-08 | 1d | PROJECT SPONSOR | 8h |  |  |  |  |
| 40 | 7.4 | **INTEGRATION** |  | 8d | 2021-11-16 | 2021-11-29 | 33 |  |  | 2021-11-09 | 2021-11-16 | 6d |  | 152h |  | 17,456 | 16,800 |  |
| 41 | 7.4.1 | CONFIGURING NETWORKS | manual | 2d | 2021-11-16 | 2021-11-17 | 39 |  |  | 2021-11-09 | 2021-11-10 | 2d | PROJECT MANAGER; TECH 1 | 32h |  | 1,280 | 1,280 |  |
| 42 | 7.4.2 | INSTALLING SOFTWARES IN WORKSTATIONS | manual | 1d | 2021-11-18 | 2021-11-18 | 41 |  |  | 2021-11-11 | 2021-11-11 | 1d | TECH 2; PUBLIC SAFETY IT SPECIALIST | 16h |  | 12,424 | 12,424 |  |
| 43 | 7.4.3 | SERVER MIGRATION | manual | 1d | 2021-11-19 | 2021-11-19 | 42 |  |  | 2021-11-12 | 2021-11-12 | 1d | PROJECT MANAGER; TECH 3; PUBLIC SAFETY IT SPECIALIST | 24h |  | 824 | 824 |  |
| 44 | 7.4.4 | SECURITY CHECKS FOR N/W ,WORKSTATIONS AND SERVER | manual | 2d | 2021-11-22 | 2021-11-23 | 43, 42 |  |  |  |  |  | IT SECURITY CONSULTANT | 16h |  | 656 |  |  |
| 45 | 7.4.5 | BACKUP STORAGE MIGRATION TO CLOUD | manual | 2d | 2021-11-24 | 2021-11-29 | 44 |  |  | 2021-11-15 | 2021-11-16 | 2d | TECH 1; TECH 3; IT TECHNICAL CO-OD; PROJECT MANAGER | 64h |  | 2,272 | 2,272 |  |
| 46 | 7.5 | **TESTING** |  | 12d | 2021-11-30 | 2021-12-15 | 40 |  |  | 2021-11-17 | 2021-12-02 | 10d |  | 224h |  | 7,752 | 7,096 |  |
| 47 | 7.5.1 | DEVELOP A TEST PLAN | manual | 1d | 2021-11-30 | 2021-11-30 | 40 |  |  | 2021-11-17 | 2021-11-17 | 1d | PROJECT MANAGER; IT TECHNICAL CO-OD | 16h |  | 624 | 624 |  |
| 48 | 7.5.2 | DEFINE TEST CASES | manual | 1d | 2021-12-01 | 2021-12-01 | 47 |  |  | 2021-11-18 | 2021-11-18 | 1d | PROJECT MANAGER; TECH 1; IT TECHNICAL CO-OD | 24h |  | 880 | 880 |  |
| 49 | 7.5.3 | **HARDWARE AND SOFTWARE TESTING** |  | 6d | 2021-12-02 | 2021-12-09 | 48 |  |  | 2021-11-19 | 2021-11-30 | 6d |  | 136h |  | 4,712 | 4,712 |  |
| 50 | 7.5.3.1 | TESTING THE NETWORKS CONNECTIVITY | manual | 1d | 2021-12-02 | 2021-12-02 | 41 |  |  | 2021-11-19 | 2021-11-19 | 1d | IT TECHNICAL CO-OD; TECH 1; PROJECT MANAGER | 24h |  | 880 | 880 |  |
| 51 | 7.5.3.2 | TESTING NEW WORKSTATIONS | manual | 1d | 2021-12-03 | 2021-12-03 | 42 |  |  | 2021-11-22 | 2021-11-22 | 1d | PROJECT MANAGER; PUBLIC SAFETY IT SPECIALIST | 16h |  | 568 | 568 |  |
| 52 | 7.5.3.3 | TESTING SERVERS | manual | 2d | 2021-12-06 | 2021-12-07 | 43 |  |  | 2021-11-23 | 2021-11-24 | 2d | IT TECHNICAL CO-OD; PROJECT MANAGER; PUBLIC SAFETY IT SPECIALIST | 48h |  | 1,616 | 1,616 |  |
| 53 | 7.5.3.4 | PERFORM TESTING FOR BACKUP DATA ON CLOUD | manual | 2d | 2021-12-08 | 2021-12-09 | 45 |  |  | 2021-11-29 | 2021-11-30 | 2d | PROJECT MANAGER; PUBLIC SAFETY IT SPECIALIST; TECH 1 | 48h |  | 1,648 | 1,648 |  |

| ID | WBS | Task | Type | Duration | Start | Finish | Predecessors | Baseline start | Baseline finish | Baseline duration | Resources | Work | Cost | Baseline cost |
| --- | --- | --- | --- | --- | --- | --- | --- | --- | --- | --- | --- | --- | --- | --- |
| 54 | 7.5.4 | **SYSTEM TESTING** |  | 1d | 2021-12-10 | 2021-12-10 | 49 | 2021-12-01 | 2021-12-02 | 2d |  | 24h | 880 | 880 |
| 55 | 7.5.4.1 | ANALYZING THE TEST RESULTS | manual | 1d | 2021-12-10 | 2021-12-10 | 48 | 2021-12-01 | 2021-12-01 | 1d | IT TECHNICAL CO-OD; PROJECT MANAGER; TECH 1 | 24h | 880 | 880 |
| 56 | 7.5.5 | SECURITY TESTING | manual | 2d | 2021-12-13 | 2021-12-14 | 49, 54 |  |  |  | IT SECURITY CONSULTANT | 16h | 656 |  |
| 57 | 7.5.6 | CLIENT APPROVAL | manual | 1d | 2021-12-15 | 2021-12-15 | 55, 56 | 2021-12-02 | 2021-12-02 | 1d | PROJECT SPONSOR | 8h |  |  |
| 58 | 7.6 | **IMPLEMENTATION** |  | 5d | 2021-12-16 | 2021-12-22 | 46 | 2021-12-03 | 2021-12-09 | 5d |  | 72h | 4,816 | 4,816 |
| 59 | 7.6.1 | PLANNING A TRAINING PROGRAM | manual | 1d | 2021-12-16 | 2021-12-16 | 57 | 2021-12-03 | 2021-12-03 | 1d | PROJECT MANAGER; PUBLIC SAFETY IT SPECIALIST | 16h | 568 | 568 |
| 60 | 7.6.2 | CONDUCTING THE TRAININGS | manual | 2d | 2021-12-17 | 2021-12-20 | 59 | 2021-12-06 | 2021-12-07 | 2d | TECH 1; TECH 2 | 32h | 3,224 | 3,224 |
| 61 | 7.6.3 | DOCUMENTATION | manual | 1d | 2021-12-21 | 2021-12-21 | 57 | 2021-12-08 | 2021-12-08 | 1d | PROJECT MANAGER; TECH 3 | 16h | 640 | 640 |
| 62 | 7.6.4 | DELIVERABLE : PROJECT EXECUTION | manual | 1d | 2021-12-22 | 2021-12-22 | 61 | 2021-12-09 | 2021-12-09 | 1d | PROJECT MANAGER | 8h | 384 | 384 |
| 63 | 8 | MILESTONE - APPROVAL OF PROJECT EXECUTION | manual | 1d | 2021-12-23 | 2021-12-23 | 58, 62 | 2021-12-10 | 2021-12-10 | 1d | PROJECT SPONSOR | 8h |  |  |
| 64 | 9 | **PROJECT CLOSURE** |  | 3d | 2021-12-24 | 2021-12-28 | 63 | 2021-12-13 | 2021-12-15 | 3d |  | 64h | 2,432 | 2,432 |
| 65 | 9.1 | PREPARE PROJECT REPORT AND PRESENTATION | manual | 2d | 2021-12-24 | 2021-12-27 | 63, 58 | 2021-12-13 | 2021-12-14 | 2d | PROJECT MANAGER; TECH 1 | 32h | 1,280 | 1,280 |
| 66 | 9.2 | PREPARE ANNUAL REPORT | manual | 1d | 2021-12-28 | 2021-12-28 | 63, 65 | 2021-12-15 | 2021-12-15 | 1d | PROJECT MANAGER; TECH 1; TECH 2; TECH 3 | 32h | 1,152 | 1,152 |
| 67 | 10 | MILESTONE - APPROVAL OF PROJECT REPORT | manual | 1d | 2021-12-29 | 2021-12-29 | 64 | 2021-12-16 | 2021-12-16 | 1d | PROJECT SPONSOR | 8h |  |  |
| 68 | 11 | **PROJECT EVALUATION** |  | 1d | 2021-10-10 | 2021-10-10 | 67 | 2021-10-10 | 2021-10-10 | 1d | PROJECT SPONSOR | 8h |  |  |
| 69 | 11.1 | EVALUATING THE PROJECT SUCCESS | manual | 1d | 2021-10-10 | 2021-10-10 |  | 2021-10-10 | 2021-10-10 | 1d |  |  |  |  |
| 70 | 11.2 | CONDUCTING SURVEYS | manual | 1d | 2021-10-10 | 2021-10-10 |  | 2021-10-10 | 2021-10-10 | 1d |  |  |  |  |
| 71 | 11.3 | PROJECT TEAM EVALUATION | manual | 1d | 2021-10-10 | 2021-10-10 |  | 2021-10-10 | 2021-10-10 | 1d |  |  |  |  |
| 72 | 12 | CONTIGENCY&OFFICESUPPLIES | manual | 1d? | 2021-10-10 | 2021-10-10 |  | 2021-10-10 | 2021-10-10 | 1d? |  |  | 11,800 | 11,800 |
