# NEW FINAL_updated_v1

Schedule from MS Project, 2021-09-02 to 2021-12-30, status date 2021-10-12, costs in $.

## Calendars

- Standard: Mon-Fri 08:00-12:00, 13:00-17:00; Sat-Sun off. Exceptions (off unless hours are given): 2021-11-25 to 2021-11-26 (Thanksgiving).

## Resources

| Resource | Rate |
| --- | --- |
| PROJECT SPONSOR |  |
| PROJECT MANAGER | 48 |
| TECH 1 | 32 |
| TECH 2 | 32 |
| TECH 3 | 32 |
| IT TECHNICAL CO-OD | 30 |
| PUBLIC SAFETY IT SPECIALIST | 23 |
| Routers | 224 |
| Software Licensing |  |
| Contigency |  |
| Servers | 1780 |
| Desktops | 1274 |
| Laptops | 1309 |
| Switches | 442 |
| cloud storage (AWS) |  |
| Training |  |
| Maintenance and Support |  |
| OfficeSupplies | 250 |
| IT SECURITY CONSULTANT | 41 |

## Schedule

| ID | WBS | Task | Type | Duration | Start | Finish | Predecessors | Baseline start | Baseline finish | Baseline duration | Total slack | Constraint | Resources | Work | Cost | Baseline cost |
| --- | --- | --- | --- | --- | --- | --- | --- | --- | --- | --- | --- | --- | --- | --- | --- | --- |
| 1 | 1 | **PROJECT INITIALIZATION** |  | 13d | 2021-09-02 | 2021-09-20 |  | 2021-09-02 | 2021-09-20 | 13d |  |  |  | 176h | 7,034 | 7,034 |
| 2 | 1.1 | Identify MOV |  | 3d | 2021-09-02 | 2021-09-06 |  | 2021-09-02 | 2021-09-06 | 3d | 0d |  | PROJECT MANAGER | 24h | 1,152 | 1,152 |
| 3 | 1.2 | DEFINING ALTERNATIVES |  | 4d | 2021-09-07 | 2021-09-10 | 2 | 2021-09-07 | 2021-09-10 | 4d | 0d |  | TECH 2; TECH 3 | 64h | 2,048 | 2,048 |
| 4 | 1.3 | TOTAL COST OF OWNERSHIP |  | 3d | 2021-09-13 | 2021-09-15 | 3 | 2021-09-13 | 2021-09-15 | 3d | 0d |  | PROJECT MANAGER; TECH 2 | 48h | 1,920 | 1,920 |
| 5 | 1.4 | TOTAL BENEFIT OF OWNERSHIP |  | 2d | 2021-09-16 | 2021-09-17 | 4 | 2021-09-16 | 2021-09-17 | 2d | 0d |  | PROJECT MANAGER; TECH 2 | 32h | 1,280 | 1,280 |
| 6 | 1.5 | BUSINESS CASE DELIVERABLE | manual | 1d | 2021-09-20 | 2021-09-20 | 5 | 2021-09-20 | 2021-09-20 | 1d |  |  | PROJECT MANAGER; OfficeSupplies | 8h | 634 | 634 |
| 7 | 2 | MILESTONE : CLIENT APPROVAL OF BUSINESS CASE | manual | 1d | 2021-09-21 | 2021-09-21 | 1 | 2021-09-21 | 2021-09-21 | 1d |  |  | PROJECT SPONSOR | 8h |  |  |
| 8 | 3 | **PROJECT CHARTER** |  | 2d | 2021-09-22 | 2021-09-23 | 7, 1 | 2021-09-22 | 2021-09-23 | 2d |  |  |  | 16h | 1,018 | 1,018 |
| 9 | 3.1 | CREATING PROJECT CHARTER | manual | 2d | 2021-09-22 | 2021-09-23 | 7 | 2021-09-22 | 2021-09-23 | 2d |  |  | PROJECT MANAGER; OfficeSupplies | 16h | 1,018 | 1,018 |
| 10 | 4 | MILESTONE:PROJECT CHARTER APPROVAL | manual | 1d | 2021-09-24 | 2021-09-24 | 8 | 2021-09-24 | 2021-09-24 | 1d |  |  | PROJECT SPONSOR | 8h |  |  |
| 11 | 5 | **PROJECT PLANNING** |  | 10d | 2021-09-27 | 2021-10-08 | 10 | 2021-09-27 | 2021-10-07 | 9d |  |  |  | 160h | 6,026 | 5,370 |
| 12 | 5.1 | IDENTIFY SCOPE OF PROJECT | manual | 2d | 2021-09-27 | 2021-09-28 | 10 | 2021-09-27 | 2021-09-28 | 2d |  |  | PROJECT MANAGER; TECH 2; PROJECT SPONSOR | 48h | 1,280 | 1,280 |
| 13 | 5.2 | DESIGNING THE STRUCTURE CHART | manual | 1d | 2021-09-29 | 2021-09-29 | 12 | 2021-09-29 | 2021-09-29 | 1d |  |  | TECH 2 | 8h | 256 | 256 |
| 14 | 5.3 | CREATING THE WORK BREAKDOWN STRUCTURE | manual | 2d | 2021-09-30 | 2021-10-01 | 13 | 2021-09-30 | 2021-10-01 | 2d |  |  | PROJECT MANAGER; TECH 3 | 32h | 1,280 | 1,280 |
| 15 | 5.4 | IDENTIFY AND ALLOCATE RESOURCES | manual | 1d | 2021-10-04 | 2021-10-04 | 14 | 2021-10-04 | 2021-10-04 | 1d |  |  | PROJECT MANAGER | 8h | 384 | 384 |
| 16 | 5.5 | SECURITY PLANNING | manual | 2d | 2021-10-04 | 2021-10-05 | 15SS |  |  |  |  |  | IT SECURITY CONSULTANT | 16h | 656 |  |
| 17 | 5.6 | ESTIMATING THE BUDGET | manual | 2d | 2021-10-06 | 2021-10-07 | 15 | 2021-10-05 | 2021-10-06 | 2d |  |  | PROJECT MANAGER; TECH 3 | 32h | 1,280 | 1,280 |
| 18 | 5.7 | DELIVARABLE : SCOPE MANGEMENT PLAN | manual | 1d | 2021-10-08 | 2021-10-08 | 17 | 2021-10-07 | 2021-10-07 | 1d |  |  | PROJECT MANAGER; TECH 2; OfficeSupplies | 16h | 890 | 890 |
| 19 | 6 | MILESTONE: SCOPE MANAGEMENT PLAN APPROVAL | manual | 1d | 2021-10-11 | 2021-10-11 | 11 | 2021-10-08 | 2021-10-08 | 1d |  |  | PROJECT SPONSOR | 8h |  |  |
| 20 | 7 | **EXECUTE** |  | 49d | 2021-10-12 | 2021-12-21 | 19 | 2021-10-11 | 2021-12-13 | 44d |  |  |  | 832h | 70,895 | 68,271 |
| 21 | 7.1 | **ANALYSIS** |  | 8d | 2021-10-12 | 2021-10-21 | 19 | 2021-10-11 | 2021-10-19 | 7d |  |  |  | 152h | 5,008 | 4,352 |
| 22 | 7.1.1 | ANALYZING THE CURRENT SYSTEM | manual | 2d | 2021-10-12 | 2021-10-13 | 19, 11 | 2021-10-11 | 2021-10-12 | 2d |  |  | PROJECT MANAGER; TECH 1; TECH 2; TECH 3 | 64h | 2,304 | 2,304 |
| 23 | 7.1.2 | CURRENT SYSTEM SECURITY ANALYSIS | manual | 1d | 2021-10-12 | 2021-10-12 | 19 |  |  |  |  |  | IT SECURITY CONSULTANT | 8h | 328 |  |
| 24 | 7.1.3 | REQUIREMENT GATHERING |  | 2d | 2021-10-14 | 2021-10-15 | 22, 23 | 2021-10-13 | 2021-10-14 | 2d | 0d | start no earlier than 2021-10-14 | TECH 1; TECH 3 | 32h | 1,024 | 1,024 |
| 25 | 7.1.4 | ANALYZE THE REQUIREMENTS | manual | 2d | 2021-10-18 | 2021-10-19 | 24 | 2021-10-15 | 2021-10-18 | 2d |  |  | TECH 1; TECH 3 | 32h | 1,024 | 1,024 |
| 26 | 7.1.5 | SECURITY REQUIREMENTS ANALYSIS | manual | 1d | 2021-10-20 | 2021-10-20 | 25 |  |  |  |  |  | IT SECURITY CONSULTANT | 8h | 328 |  |
| 27 | 7.1.6 | CLIENT APPROVAL |  | 1d | 2021-10-21 | 2021-10-21 | 25, 26 | 2021-10-19 | 2021-10-19 | 1d | 0d | start no earlier than 2021-10-21 | PROJECT SPONSOR | 8h |  |  |

| ID | WBS | Task | Type | Duration | Start | Finish | Predecessors | Baseline start | Baseline finish | Baseline duration | Resources | Work | Cost | Baseline cost |
| --- | --- | --- | --- | --- | --- | --- | --- | --- | --- | --- | --- | --- | --- | --- |
| 28 | 7.2 | **DESIGN** |  | 5d | 2021-10-22 | 2021-10-28 | 21 | 2021-10-20 | 2021-10-25 | 4d |  | 64h | 2,248 | 1,920 |
| 29 | 7.2.1 | DEVELOPING ICT DIAGRAM | manual | 2d | 2021-10-22 | 2021-10-25 | 27, 21 | 2021-10-20 | 2021-10-21 | 2d | PROJECT MANAGER; TECH 3 | 32h | 1,280 | 1,280 |
| 30 | 7.2.2 | ARCHITECTURAL DESIGN | manual | 1d | 2021-10-26 | 2021-10-26 | 29 | 2021-10-22 | 2021-10-22 | 1d | PROJECT MANAGER; TECH 2 | 16h | 640 | 640 |
| 31 | 7.2.3 | IT SECURITY DESIGN | manual | 1d | 2021-10-27 | 2021-10-27 | 30 |  |  |  | IT SECURITY CONSULTANT | 8h | 328 |  |
| 32 | 7.2.4 | CLIENT APPROVAL | manual | 1d | 2021-10-28 | 2021-10-28 | 30, 31 | 2021-10-25 | 2021-10-25 | 1d | PROJECT SPONSOR | 8h |  |  |
| 33 | 7.3 | **CONSTRUCTION** |  | 11d | 2021-10-29 | 2021-11-12 | 28 | 2021-10-26 | 2021-11-08 | 10d |  | 168h | 30,615 | 30,287 |
| 34 | 7.3.1 | UPGRADING NETWORKS | manual | 2d | 2021-10-29 | 2021-11-01 | 32 | 2021-10-26 | 2021-10-27 | 2d | PROJECT MANAGER; TECH 1; Routers [500%]; Switches [200%]; Contigency [0.1%] | 32h | 5,284 | 5,284 |
| 35 | 7.3.2 | REPLACING WORKSTATIONS | manual | 2d | 2021-11-02 | 2021-11-03 | 34 | 2021-10-28 | 2021-10-29 | 2d | TECH 2; Desktops [500%]; Laptops [500%]; Contigency [0.1%] | 16h | 15,427 | 15,427 |
| 36 | 7.3.3 | REPLACING SERVERS | manual | 2d | 2021-11-04 | 2021-11-05 | 35 | 2021-11-01 | 2021-11-02 | 2d | PROJECT MANAGER; TECH 3; Servers [200%]; Contigency [0.1%] | 32h | 6,840 | 6,840 |
| 37 | 7.3.4 | MIGRATING BACKUP STORAGE FROM ONPREMISE TO CLOUD | manual | 3d | 2021-11-08 | 2021-11-10 | 36 | 2021-11-03 | 2021-11-05 | 3d | PROJECT MANAGER; TECH 2; TECH 3; cloud storage (AWS) [0.1%] | 72h | 2,736 | 2,736 |
| 38 | 7.3.5 | VERIFYING THE SECURITY REQUIREMENTS OF BACKUP STORAGE | manual | 1d | 2021-11-11 | 2021-11-11 | 37 |  |  |  | IT SECURITY CONSULTANT | 8h | 328 |  |
| 39 | 7.3.6 | CLIENT APPROVAL | manual | 1d | 2021-11-12 | 2021-11-12 | 37, 38 | 2021-11-08 | 2021-11-08 | 1d | PROJECT SPONSOR | 8h |  |  |
| 40 | 7.4 | **INTEGRATION** |  | 8d | 2021-11-15 | 2021-11-24 | 33 | 2021-11-09 | 2021-11-16 | 6d |  | 152h | 19,456 | 18,800 |
| 41 | 7.4.1 | CONFIGURING NETWORKS | manual | 2d | 2021-11-15 | 2021-11-16 | 39 | 2021-11-09 | 2021-11-10 | 2d | PROJECT MANAGER; TECH 1 | 32h | 1,280 | 1,280 |
| 42 | 7.4.2 | INSTALLING SOFTWARES IN WORKSTATIONS | manual | 1d | 2021-11-17 | 2021-11-17 | 41 | 2021-11-11 | 2021-11-11 | 1d | TECH 2; PUBLIC SAFETY IT SPECIALIST; Software Licensing [0.1%]; Contigency [0.1%] | 16h | 14,424 | 14,424 |
| 43 | 7.4.3 | SERVER MIGRATION | manual | 1d | 2021-11-18 | 2021-11-18 | 42 | 2021-11-12 | 2021-11-12 | 1d | PROJECT MANAGER; TECH 3; PUBLIC SAFETY IT SPECIALIST | 24h | 824 | 824 |
| 44 | 7.4.4 | SECURITY CHECKS FOR N/W,WORKSTATIONS AND SERVERS | manual | 2d | 2021-11-19 | 2021-11-22 | 41, 42, 43 |  |  |  | IT SECURITY CONSULTANT | 16h | 656 |  |
| 45 | 7.4.5 | BACKUP STORAGE MIGRATION TO CLOUD | manual | 2d | 2021-11-23 | 2021-11-24 | 43, 44 | 2021-11-15 | 2021-11-16 | 2d | TECH 1; TECH 3; IT TECHNICAL CO-OD; PROJECT MANAGER | 64h | 2,272 | 2,272 |
| 46 | 7.5 | **TESTING** |  | 12d | 2021-11-29 | 2021-12-14 | 40 | 2021-11-17 | 2021-12-02 | 10d |  | 224h | 8,002 | 7,346 |
| 47 | 7.5.1 | DEVELOP A TEST PLAN | manual | 1d | 2021-11-29 | 2021-11-29 | 40 | 2021-11-17 | 2021-11-17 | 1d | PROJECT MANAGER; IT TECHNICAL CO-OD | 16h | 624 | 624 |
| 48 | 7.5.2 | DEFINE TEST CASES | manual | 1d | 2021-11-30 | 2021-11-30 | 47 | 2021-11-18 | 2021-11-18 | 1d | PROJECT MANAGER; TECH 1; IT TECHNICAL CO-OD | 24h | 880 | 880 |
| 49 | 7.5.3 | **HARDWARE AND SOFTWARE TESTING** |  | 6d | 2021-12-01 | 2021-12-08 | 48 | 2021-11-19 | 2021-11-30 | 6d |  | 136h | 4,712 | 4,712 |
| 50 | 7.5.3.1 | TESTING THE NETWORKS CONNECTIVITY | manual | 1d | 2021-12-01 | 2021-12-01 | 41 | 2021-11-19 | 2021-11-19 | 1d | IT TECHNICAL CO-OD; TECH 1; PROJECT MANAGER | 24h | 880 | 880 |
| 51 | 7.5.3.2 | TESTING NEW WORKSTATIONS | manual | 1d | 2021-12-02 | 2021-12-02 | 42 | 2021-11-22 | 2021-11-22 | 1d | PROJECT MANAGER; PUBLIC SAFETY IT SPECIALIST | 16h | 568 | 568 |
| 52 | 7.5.3.3 | TESTING SERVERS | manual | 2d | 2021-12-03 | 2021-12-06 | 43 | 2021-11-23 | 2021-11-24 | 2d | IT TECHNICAL CO-OD; PROJECT MANAGER; PUBLIC SAFETY IT SPECIALIST | 48h | 1,616 | 1,616 |
| 53 | 7.5.3.4 | PERFORM TESTING FOR BACKUP DATA ON CLOUD | manual | 2d | 2021-12-07 | 2021-12-08 | 45 | 2021-11-29 | 2021-11-30 | 2d | PROJECT MANAGER; PUBLIC SAFETY IT SPECIALIST; TECH 1 | 48h | 1,648 | 1,648 |

| ID | WBS | Task | Type | Duration | Start | Finish | Predecessors | Baseline start | Baseline finish | Baseline duration | Resources | Work | Cost | Baseline cost |
| --- | --- | --- | --- | --- | --- | --- | --- | --- | --- | --- | --- | --- | --- | --- |
| 54 | 7.5.4 | **SYSTEM TESTING** |  | 1d | 2021-12-09 | 2021-12-09 | 49 | 2021-12-01 | 2021-12-02 | 2d |  | 24h | 1,130 | 1,130 |
| 55 | 7.5.4.1 | ANALYZING THE TEST RESULTS | manual | 1d | 2021-12-09 | 2021-12-09 | 48 | 2021-12-01 | 2021-12-01 | 1d | IT TECHNICAL CO-OD; PROJECT MANAGER; TECH 1; OfficeSupplies | 24h | 1,130 | 1,130 |
| 56 | 7.5.5 | SECURITY TESTING | manual | 2d | 2021-12-10 | 2021-12-13 | 49, 54 |  |  |  | IT SECURITY CONSULTANT | 16h | 656 |  |
| 57 | 7.5.6 | CLIENT APPROVAL | manual | 1d | 2021-12-14 | 2021-12-14 | 55, 56 | 2021-12-02 | 2021-12-02 | 1d | PROJECT SPONSOR | 8h |  |  |
| 58 | 7.6 | **IMPLEMENTATION** |  | 5d | 2021-12-15 | 2021-12-21 | 46 | 2021-12-03 | 2021-12-09 | 5d |  | 72h | 5,566 | 5,566 |
| 59 | 7.6.1 | PLANNING A TRAINING PROGRAM | manual | 1d | 2021-12-15 | 2021-12-15 | 57 | 2021-12-03 | 2021-12-03 | 1d | PROJECT MANAGER; PUBLIC SAFETY IT SPECIALIST | 16h | 568 | 568 |
| 60 | 7.6.2 | CONDUCTING THE TRAININGS | manual | 2d | 2021-12-16 | 2021-12-17 | 59 | 2021-12-06 | 2021-12-07 | 2d | TECH 1; TECH 2; Training [0.1%]; OfficeSupplies; Maintenance and Support [0.1%] | 32h | 3,474 | 3,474 |
| 61 | 7.6.3 | DOCUMENTATION | manual | 1d | 2021-12-20 | 2021-12-20 | 57 | 2021-12-08 | 2021-12-08 | 1d | PROJECT MANAGER; TECH 3; OfficeSupplies | 16h | 890 | 890 |
| 62 | 7.6.4 | DELIVERABLE : PROJECT EXECUTION | manual | 1d | 2021-12-21 | 2021-12-21 | 61 | 2021-12-09 | 2021-12-09 | 1d | PROJECT MANAGER; OfficeSupplies | 8h | 634 | 634 |
| 63 | 8 | MILESTONE - APPROVAL OF PROJECT EXECUTION | manual | 1d | 2021-12-22 | 2021-12-22 | 58, 62 | 2021-12-10 | 2021-12-10 | 1d | PROJECT SPONSOR | 8h |  |  |
| 64 | 9 | **PROJECT CLOSURE** |  | 3d | 2021-12-27 | 2021-12-29 | 63 | 2021-12-13 | 2021-12-15 | 3d |  | 64h | 4,682 | 4,682 |
| 65 | 9.1 | PREPARE PROJECT REPORT AND PRESENTATION | manual | 2d | 2021-12-23 | 2021-12-24 | 63, 58 | 2021-12-13 | 2021-12-14 | 2d | PROJECT MANAGER; TECH 1; Contigency [0.1%] | 32h | 3,280 | 3,280 |
| 66 | 9.2 | PREPARE ANNUAL REPORT | manual | 1d | 2021-12-27 | 2021-12-27 | 63, 65 | 2021-12-15 | 2021-12-15 | 1d | PROJECT MANAGER; TECH 1; TECH 2; TECH 3; OfficeSupplies | 32h | 1,402 | 1,402 |
| 67 | 10 | MILESTONE - APPROVAL OF PROJECT REPORT | manual | 1d | 2021-12-30 | 2021-12-30 | 64 | 2021-12-16 | 2021-12-16 | 1d | PROJECT SPONSOR | 8h |  |  |
| 68 | 11 | **PROJECT EVALUATION** |  | 1d | 2021-09-02 | 2021-09-02 | 67 | 2021-09-02 | 2021-09-02 | 1d | PROJECT SPONSOR | 8h |  |  |
| 69 | 11.1 | EVALUATING THE PROJECT SUCCESS | manual | 1d | 2021-09-02 | 2021-09-02 |  | 2021-09-02 | 2021-09-02 | 1d |  |  |  |  |
| 70 | 11.2 | CONDUCTING SURVEYS | manual | 1d | 2021-09-02 | 2021-09-02 |  | 2021-09-02 | 2021-09-02 | 1d |  |  |  |  |
| 71 | 11.3 | PROJECT TEAM EVALUATION | manual | 1d | 2021-09-02 | 2021-09-02 |  | 2021-09-02 | 2021-09-02 | 1d |  |  |  |  |
