# NEW FINAL_updated_v1

Schedule from MS Project, 2021-09-02 to 2021-12-07, status date 2021-10-01, costs in $.

## Calendars

- Standard: Mon-Fri 08:00-12:00, 13:00-17:00; Sat-Sun off. Exceptions (off unless hours are given): 2021-11-25 to 2021-11-26 (Thanksgiving).

## Resources

| Resource | Rate |
| --- | --- |
| PROJECT SPONSOR |  |
| PROJECT MANAGER | 48 |
| TECH 1 | 32 |
| TECH 2 | 32 |
| TECH 3 | 32 |
| IT TECHNICAL CO-OD | 30 |
| PUBLIC SAFETY IT SPECIALIST | 23 |
| Routers | 224 |
| Software Licensing |  |
| Contigency |  |
| Servers | 1780 |
| Desktops | 1274 |
| Laptops | 1309 |
| Switches | 442 |
| cloud storage (AWS) |  |
| Training |  |
| OfficeSupplies | 250 |
| IT SECURITY CONSULTANT | 41 |

## Schedule

| ID | WBS | Task | Type | Duration | Start | Finish | Predecessors | Baseline start | Baseline finish | Baseline duration | Total slack | Constraint | Resources | Work | Cost | Baseline cost |
| --- | --- | --- | --- | --- | --- | --- | --- | --- | --- | --- | --- | --- | --- | --- | --- | --- |
| 1 | 1 | **PROJECT INITIALIZATION** |  | 6d | 2021-09-02 | 2021-09-09 |  | 2021-09-02 | 2021-09-20 | 13d |  |  |  | 80h | 3,322 | 7,034 |
| 2 | 1.1 | Identify MOV |  | 2d | 2021-09-02 | 2021-09-03 |  | 2021-09-02 | 2021-09-06 | 3d | 0d |  | PROJECT MANAGER | 16h | 768 | 1,152 |
| 3 | 1.2 | DEFINING ALTERNATIVES |  | 2d | 2021-09-06 | 2021-09-07 | 2 | 2021-09-07 | 2021-09-10 | 4d | 0d |  | TECH 2; TECH 3 | 32h | 1,024 | 2,048 |
| 4 | 1.3 | TOTAL COST OF OWNERSHIP |  | 1d | 2021-09-08 | 2021-09-08 | 3 | 2021-09-13 | 2021-09-15 | 3d | 0d |  | PROJECT MANAGER; TECH 2 | 16h | 640 | 1,920 |
| 5 | 1.4 | TOTAL BENEFIT OF OWNERSHIP |  | 1d | 2021-09-08 | 2021-09-08 | 4SS | 2021-09-16 | 2021-09-17 | 2d | 0d |  | TECH 3 | 8h | 256 | 1,280 |
| 6 | 1.5 | BUSINESS CASE DELIVERABLE |  | 1d | 2021-09-09 | 2021-09-09 | 5 | 2021-09-20 | 2021-09-20 | 1d | 0d |  | PROJECT MANAGER; OfficeSupplies | 8h | 634 | 634 |
| 7 | 2 | MILESTONE : CLIENT APPROVAL OF BUSINESS CASE | manual | 1d | 2021-09-10 | 2021-09-10 | 1 | 2021-09-21 | 2021-09-21 | 1d |  |  | PROJECT SPONSOR | 8h |  |  |
| 8 | 3 | **PROJECT CHARTER** |  | 2d | 2021-09-13 | 2021-09-14 | 7, 1 | 2021-09-22 | 2021-09-23 | 2d |  |  |  | 16h | 1,018 | 1,018 |
| 9 | 3.1 | CREATING PROJECT CHARTER | manual | 2d | 2021-09-13 | 2021-09-14 | 7 | 2021-09-22 | 2021-09-23 | 2d |  |  | PROJECT MANAGER; OfficeSupplies | 16h | 1,018 | 1,018 |
| 10 | 4 | MILESTONE:PROJECT CHARTER APPROVAL | manual | 1d | 2021-09-15 | 2021-09-15 | 8 | 2021-09-24 | 2021-09-24 | 1d |  |  | PROJECT SPONSOR | 8h |  |  |
| 11 | 5 | **PROJECT PLANNING** |  | 9d | 2021-09-16 | 2021-09-28 | 10 | 2021-09-27 | 2021-10-07 | 9d |  |  |  | 144h | 5,386 | 5,370 |
| 12 | 5.1 | IDENTIFY SCOPE OF PROJECT | manual | 2d | 2021-09-16 | 2021-09-17 | 10 | 2021-09-27 | 2021-09-28 | 2d |  |  | PROJECT MANAGER; PROJECT SPONSOR | 32h | 768 | 1,280 |
| 13 | 5.2 | DESIGNING THE STRUCTURE CHART | manual | 1d | 2021-09-17 | 2021-09-17 | 12SS | 2021-09-29 | 2021-09-29 | 1d |  |  | TECH 2 | 8h | 256 | 256 |
| 14 | 5.3 | CREATING THE WORK BREAKDOWN STRUCTURE | manual | 2d | 2021-09-20 | 2021-09-21 | 13 | 2021-09-30 | 2021-10-01 | 2d |  |  | PROJECT MANAGER; TECH 3 | 32h | 1,280 | 1,280 |
| 15 | 5.4 | IDENTIFY AND ALLOCATE RESOURCES | manual | 1d | 2021-09-22 | 2021-09-22 | 14 | 2021-10-04 | 2021-10-04 | 1d |  |  | TECH 2 | 8h | 256 | 384 |
| 16 | 5.5 | SECURITY PLANNING | manual | 2d | 2021-09-22 | 2021-09-23 | 15SS |  |  |  |  |  | IT SECURITY CONSULTANT | 16h | 656 |  |
| 17 | 5.6 | ESTIMATING THE BUDGET | manual | 2d | 2021-09-24 | 2021-09-27 | 15 | 2021-10-05 | 2021-10-06 | 2d |  |  | PROJECT MANAGER; TECH 3 | 32h | 1,280 | 1,280 |
| 18 | 5.7 | DELIVARABLE : SCOPE MANGEMENT PLAN | manual | 1d | 2021-09-28 | 2021-09-28 | 17 | 2021-10-07 | 2021-10-07 | 1d |  |  | PROJECT MANAGER; TECH 2; OfficeSupplies | 16h | 890 | 890 |
| 19 | 6 | MILESTONE: SCOPE MANAGEMENT PLAN APPROVAL | manual | 1d | 2021-09-29 | 2021-09-29 | 11 | 2021-10-08 | 2021-10-08 | 1d |  |  | PROJECT SPONSOR | 8h |  |  |
| 20 | 7 | **EXECUTE** |  | 45d | 2021-09-30 | 2021-12-03 | 19 | 2021-10-11 | 2021-12-13 | 44d |  |  |  | 712h | 61,527 | 63,071 |
| 21 | 7.1 | **ANALYSIS** |  | 6d | 2021-09-30 | 2021-10-07 | 19 | 2021-10-11 | 2021-10-19 | 7d |  |  |  | 88h | 2,960 | 4,352 |
| 22 | 7.1.1 | ANALYZING THE CURRENT SYSTEM | manual | 2d | 2021-09-30 | 2021-10-01 | 19, 11 | 2021-10-11 | 2021-10-12 | 2d |  |  | PROJECT MANAGER; TECH 1 | 32h | 1,280 | 2,304 |
| 23 | 7.1.2 | CURRENT SYSTEM SECURITY ANALYSIS | manual | 1d | 2021-10-01 | 2021-10-01 | 19SS |  |  |  |  |  | IT SECURITY CONSULTANT | 8h | 328 |  |
| 24 | 7.1.3 | REQUIREMENT GATHERING |  | 2d | 2021-10-04 | 2021-10-05 | 22 | 2021-10-13 | 2021-10-14 | 2d | 0d | start no earlier than 2021-10-04 | TECH 3 | 16h | 512 | 1,024 |
| 25 | 7.1.4 | ANALYZE THE REQUIREMENTS | manual | 1d | 2021-10-06 | 2021-10-06 | 24 | 2021-10-15 | 2021-10-18 | 2d |  |  | TECH 1; TECH 3 | 16h | 512 | 1,024 |
| 26 | 7.1.5 | SECURITY REQUIREMENTS ANALYSIS | manual | 1d | 2021-10-06 | 2021-10-06 | 25SS |  |  |  |  |  | IT SECURITY CONSULTANT | 8h | 328 |  |
| 27 | 7.1.6 | CLIENT APPROVAL |  | 1d | 2021-10-07 | 2021-10-07 | 25 | 2021-10-19 | 2021-10-19 | 1d | 0d | start no earlier than 2021-10-07 | PROJECT SPONSOR | 8h |  |  |

| ID | WBS | Task | Type | Duration | Start | Finish | Predecessors | Baseline start | Baseline finish | Baseline duration | Resources | Work | Cost | Baseline cost |
| --- | --- | --- | --- | --- | --- | --- | --- | --- | --- | --- | --- | --- | --- | --- |
| 28 | 7.2 | **DESIGN** |  | 4d | 2021-10-08 | 2021-10-13 | 21 | 2021-10-20 | 2021-10-25 | 4d |  | 64h | 2,248 | 1,920 |
| 29 | 7.2.1 | DEVELOPING ICT DIAGRAM | manual | 2d | 2021-10-08 | 2021-10-11 | 27, 21 | 2021-10-20 | 2021-10-21 | 2d | PROJECT MANAGER; TECH 3 | 32h | 1,280 | 1,280 |
| 30 | 7.2.2 | ARCHITECTURAL DESIGN | manual | 1d | 2021-10-12 | 2021-10-12 | 29 | 2021-10-22 | 2021-10-22 | 1d | PROJECT MANAGER; TECH 2 | 16h | 640 | 640 |
| 31 | 7.2.3 | IT SECURITY DESIGN | manual | 1d | 2021-10-12 | 2021-10-12 | 30SS |  |  |  | IT SECURITY CONSULTANT | 8h | 328 |  |
| 32 | 7.2.4 | CLIENT APPROVAL | manual | 1d | 2021-10-13 | 2021-10-13 | 30, 31 | 2021-10-25 | 2021-10-25 | 1d | PROJECT SPONSOR | 8h |  |  |
| 33 | 7.3 | **CONSTRUCTION** |  | 7d | 2021-10-14 | 2021-10-22 | 28 | 2021-10-26 | 2021-11-08 | 10d |  | 128h | 26,079 | 27,287 |
| 34 | 7.3.1 | UPGRADING NETWORKS | manual | 2d | 2021-10-14 | 2021-10-15 | 32 | 2021-10-26 | 2021-10-27 | 2d | PROJECT MANAGER; TECH 1; Routers [500%]; Switches [200%]; Contigency [0.1%] | 32h | 4,284 | 4,284 |
| 35 | 7.3.2 | REPLACING WORKSTATIONS | manual | 2d | 2021-10-14 | 2021-10-15 | 34SS | 2021-10-28 | 2021-10-29 | 2d | TECH 2; Desktops [500%]; Laptops [500%]; Contigency [0.1%] | 16h | 14,427 | 14,427 |
| 36 | 7.3.3 | REPLACING SERVERS | manual | 1d | 2021-10-18 | 2021-10-18 | 35 | 2021-11-01 | 2021-11-02 | 2d | PROJECT MANAGER; TECH 3; Servers [200%]; Contigency [0.1%] | 16h | 5,200 | 5,840 |
| 37 | 7.3.4 | MIGRATING BACKUP STORAGE FROM ONPREMISE TO CLOUD | manual | 2d | 2021-10-19 | 2021-10-20 | 36 | 2021-11-03 | 2021-11-05 | 3d | PROJECT MANAGER; TECH 2; TECH 3; cloud storage (AWS) [0.1%] | 48h | 1,840 | 2,736 |
| 38 | 7.3.5 | VERIFYING THE SECUIRTY REQUIREMENTS OF BACKUP STORAGE | manual | 1d | 2021-10-21 | 2021-10-21 | 37 |  |  |  | IT SECURITY CONSULTANT | 8h | 328 |  |
| 39 | 7.3.6 | CLIENT APPROVAL | manual | 1d | 2021-10-22 | 2021-10-22 | 37 | 2021-11-08 | 2021-11-08 | 1d | PROJECT SPONSOR | 8h |  |  |
| 40 | 7.4 | **INTEGRATION** |  | 8d | 2021-10-26 | 2021-11-04 | 33 | 2021-11-09 | 2021-11-16 | 6d |  | 120h | 17,432 | 17,800 |
| 41 | 7.4.1 | CONFIGURING NETWORKS | manual | 2d | 2021-10-26 | 2021-10-27 | 39 | 2021-11-09 | 2021-11-10 | 2d | PROJECT MANAGER; TECH 1 | 32h | 1,280 | 1,280 |
| 42 | 7.4.2 | INSTALLING SOFTWARES IN WORKSTATIONS | manual | 1d | 2021-10-28 | 2021-10-28 | 41 | 2021-11-11 | 2021-11-11 | 1d | TECH 2; PUBLIC SAFETY IT SPECIALIST; Software Licensing [0.1%]; Contigency [0.1%] | 16h | 13,424 | 13,424 |
| 43 | 7.4.3 | SERVER MIGRATION | manual | 1d | 2021-10-29 | 2021-10-29 | 42 | 2021-11-12 | 2021-11-12 | 1d | PROJECT MANAGER; TECH 3; PUBLIC SAFETY IT SPECIALIST | 24h | 824 | 824 |
| 44 | 7.4.4 | SECURITY CHECKS FOR NETWORKS , WORKSTATIONS AND SERVERS | manual | 2d | 2021-11-01 | 2021-11-02 | 41, 42, 43 |  |  |  | IT SECURITY CONSULTANT | 16h | 656 |  |
| 45 | 7.4.5 | BACKUP STORAGE MIGRATION TO CLOUD | manual | 2d | 2021-11-01 | 2021-11-02 | 43, 44SS | 2021-11-15 | 2021-11-16 | 2d | IT TECHNICAL CO-OD; PROJECT MANAGER | 32h | 1,248 | 2,272 |
| 46 | 7.5 | **TESTING** |  | 13d | 2021-11-04 | 2021-11-22 | 40 | 2021-11-17 | 2021-12-02 | 10d |  | 232h | 8,202 | 7,346 |
| 47 | 7.5.1 | DEVELOP A TEST PLAN | manual | 1d | 2021-11-04 | 2021-11-04 |  | 2021-11-17 | 2021-11-17 | 1d | PROJECT MANAGER; IT TECHNICAL CO-OD | 16h | 624 | 624 |
| 48 | 7.5.2 | DEFINE TEST CASES | manual | 1d | 2021-11-05 | 2021-11-05 | 47 | 2021-11-18 | 2021-11-18 | 1d | TECH 1; PUBLIC SAFETY IT SPECIALIST | 16h | 440 | 880 |
| 49 | 7.5.3 | **HARDWARE AND SOFTWARE TESTING** |  | 7d | 2021-11-08 | 2021-11-16 | 48 | 2021-11-19 | 2021-11-30 | 6d |  | 152h | 5,352 | 4,712 |
| 50 | 7.5.3.1 | TESTING THE NETWORKS CONNECTIVITY | manual | 2d | 2021-11-08 | 2021-11-09 | 41 | 2021-11-19 | 2021-11-19 | 1d | IT TECHNICAL CO-OD; PROJECT MANAGER; TECH 2 | 48h | 1,760 | 880 |
| 51 | 7.5.3.2 | TESTING NEW WORKSTATIONS | manual | 2d | 2021-11-10 | 2021-11-11 | 42 | 2021-11-22 | 2021-11-22 | 1d | PROJECT MANAGER; PUBLIC SAFETY IT SPECIALIST | 32h | 1,136 | 568 |
| 52 | 7.5.3.3 | TESTING SERVERS | manual | 1d | 2021-11-12 | 2021-11-12 | 43 | 2021-11-23 | 2021-11-24 | 2d | IT TECHNICAL CO-OD; PROJECT MANAGER; PUBLIC SAFETY IT SPECIALIST | 24h | 808 | 1,616 |
| 53 | 7.5.3.4 | PERFORM TESTING FOR BACKUP DATA ON CLOUD | manual | 2d | 2021-11-15 | 2021-11-16 | 45 | 2021-11-29 | 2021-11-30 | 2d | PROJECT MANAGER; PUBLIC SAFETY IT SPECIALIST; TECH 1 | 48h | 1,648 | 1,648 |

| ID | WBS | Task | Type | Duration | Start | Finish | Predecessors | Baseline start | Baseline finish | Baseline duration | Resources | Work | Cost | Baseline cost |
| --- | --- | --- | --- | --- | --- | --- | --- | --- | --- | --- | --- | --- | --- | --- |
| 54 | 7.5.4 | **SYSTEM TESTING** |  | 3d | 2021-11-17 | 2021-11-19 | 49 | 2021-12-01 | 2021-12-02 | 2d |  | 24h | 1,130 | 1,130 |
| 55 | 7.5.4.1 | ANALYZING THE TEST RESULTS | manual | 1d | 2021-11-17 | 2021-11-17 | 48 | 2021-12-01 | 2021-12-01 | 1d | IT TECHNICAL CO-OD; PROJECT MANAGER; TECH 1; OfficeSupplies | 24h | 1,130 | 1,130 |
| 56 | 7.5.5 | SECURITY TESTING | manual | 2d | 2021-11-18 | 2021-11-19 | 49 |  |  |  | IT SECURITY CONSULTANT | 16h | 656 |  |
| 57 | 7.5.6 | CLIENT APPROVAL | manual | 1d | 2021-11-22 | 2021-11-22 | 55 | 2021-12-02 | 2021-12-02 | 1d | PROJECT SPONSOR | 8h |  |  |
| 58 | 7.6 | **IMPLEMENTATION** |  | 4d | 2021-11-23 | 2021-11-30 | 46 | 2021-12-03 | 2021-12-09 | 5d |  | 80h | 4,606 | 4,366 |
| 59 | 7.6.1 | PLANNING A TRAINING PROGRAM | manual | 1d | 2021-11-23 | 2021-11-23 | 57 | 2021-12-03 | 2021-12-03 | 1d | PROJECT MANAGER; PUBLIC SAFETY IT SPECIALIST; IT TECHNICAL CO-OD | 24h | 808 | 568 |
| 60 | 7.6.2 | CONDUCTING THE TRAININGS | manual | 2d | 2021-11-24 | 2021-11-29 | 59 | 2021-12-06 | 2021-12-07 | 2d | TECH 1; TECH 2; Training [0.1%]; OfficeSupplies | 32h | 2,274 | 2,274 |
| 61 | 7.6.3 | DOCUMENTATION | manual | 1d | 2021-11-24 | 2021-11-24 | 60SS | 2021-12-08 | 2021-12-08 | 1d | PROJECT MANAGER; TECH 3; OfficeSupplies | 16h | 890 | 890 |
| 62 | 7.6.4 | DELIVERABLE : PROJECT EXECUTION | manual | 1d | 2021-11-30 | 2021-11-30 | 61 | 2021-12-09 | 2021-12-09 | 1d | PROJECT MANAGER; OfficeSupplies | 8h | 634 | 634 |
| 63 | 8 | MILESTONE - APPROVAL OF PROJECT EXECUTION | manual | 1d | 2021-12-01 | 2021-12-01 | 58, 57 | 2021-12-10 | 2021-12-10 | 1d | PROJECT SPONSOR | 8h |  |  |
| 64 | 9 | **PROJECT CLOSURE** |  | 3d | 2021-12-02 | 2021-12-06 | 63 | 2021-12-13 | 2021-12-15 | 3d |  | 64h | 3,682 | 3,682 |
| 65 | 9.1 | PREPARE PROJECT REPORT AND PRESENTATION | manual | 2d | 2021-12-02 | 2021-12-03 | 63 | 2021-12-13 | 2021-12-14 | 2d | PROJECT MANAGER; TECH 1; Contigency [0.1%] | 32h | 2,280 | 2,280 |
| 66 | 9.2 | PREPARE ANNUAL REPORT | manual | 1d | 2021-12-06 | 2021-12-06 | 63 | 2021-12-15 | 2021-12-15 | 1d | PROJECT MANAGER; TECH 1; TECH 2; TECH 3; OfficeSupplies | 32h | 1,402 | 1,402 |
| 67 | 10 | MILESTONE - APPROVAL OF PROJECT REPORT | manual | 1d | 2021-12-07 | 2021-12-07 | 64 | 2021-12-16 | 2021-12-16 | 1d | PROJECT SPONSOR | 8h |  |  |
| 68 | 11 | **PROJECT EVALUATION** |  | 1d | 2021-09-02 | 2021-09-02 | 67 | 2021-09-02 | 2021-09-02 | 1d | PROJECT SPONSOR | 8h |  |  |
| 69 | 11.1 | EVALUATING THE PROJECT SUCCESS | manual | 1d | 2021-09-02 | 2021-09-02 |  | 2021-09-02 | 2021-09-02 | 1d |  |  |  |  |
| 70 | 11.2 | CONDUCTING SURVEYS | manual | 1d | 2021-09-02 | 2021-09-02 |  | 2021-09-02 | 2021-09-02 | 1d |  |  |  |  |
| 71 | 11.3 | PROJECT TEAM EVALUATION | manual | 1d | 2021-09-02 | 2021-09-02 |  | 2021-09-02 | 2021-09-02 | 1d |  |  |  |  |
